# Scientific_Calculator

Schedule from MS Project, 2018-05-08 to 2018-06-06, 7 hours a day, A marks actual dates.
Planification de la réalisation d'une calculatrice scientifique
CPNV

## Calendars

- Standard: Mon 09:50-12:05, 13:30-15:00, 15:15-16:05; Tue 08:00-09:30, 09:50-12:10, 13:30-15:00, 15:20-16:50; Wed 08:00-09:30, 09:50-12:05, 13:30-15:00, 15:20-16:05; Thu 09:50-12:05, 13:30-15:00, 15:20-16:50; Fri-Sun off. Exceptions (off unless hours are given): 2018-05-10 to 2018-05-11 (Pont de l'Ascension), 2018-05-21 (lundi de Pentecôte).

## Schedule

| ID | WBS | Task | Type | Duration | Start | Finish | Predecessors | Complete | Remaining | Total slack | Free slack | Work | Actual work |
| --- | --- | --- | --- | --- | --- | --- | --- | --- | --- | --- | --- | --- | --- |
| 1 | 1 | **Totalité du projet** |  | 90h | 2018-05-08 09:00 A | 2018-06-06 11:40 |  | 11% | 80.45h |  |  | 156.25h | 20.75h |
| 2 | 1.1 | Rédaction de la Planification initiale |  | 2h | 2018-05-08 09:00 A | 2018-05-08 11:20 A |  | 100% |  |  |  | 2h | 2h |
| 3 | 1.2 | **Analyse** |  | 15.5h | 2018-05-08 11:20 A | 2018-05-15 09:05 |  | 75% | 3.9h |  |  | 16h | 13.25h |
| 4 | 1.2.1 | Création des Use Cases |  | 2h | 2018-05-08 11:20 A | 2018-05-08 14:40 A | 2 | 100% |  |  |  | 2h | 2h |
| 5 | 1.2.2 | Création des maquettes et de l'interface graphique essentielle |  | 4.5h | 2018-05-08 14:40 A | 2018-05-09 11:00 | 4 | 85% | 0.65h | 0.5d | 0d | 5h | 4.5h |
| 6 | 1.2.3 | Création des scénarii |  | 6h | 2018-05-09 10:30 A | 2018-05-14 12:00 | 5 | 67% | 2h | 0d |  | 6h | 5h |
| 7 | 1.2.4 | Création du Modèle Conceptuel de Données |  | 2h | 2018-05-14 10:00 A | 2018-05-14 14:25 | 6 | 50% | 1h | 0.11d | 0d | 2h | 1h |
| 8 | 1.2.5 | Création de Modèle Logique de Données |  | 1h | 2018-05-14 14:25 A | 2018-05-14 15:40 | 7 | 75% | 0.25h | 0.79d | 0.14d | 1h | 0.75h |
| 9 | 1.3 | Documentation de l'analyse |  | 5.5h | 2018-05-15 08:35 A | 2018-05-15 16:05 | 8 | 82% | 1h | -0.07d | 0d | 4.75h | 4.5h |
| 10 | 1.4 | **Implémentation & tests** |  | 50h | 2018-05-15 16:05 A | 2018-05-31 13:45 |  | 2% | 49h |  |  | 33.5h | 1h |
| 11 | 1.4.1 | Implémentation des classes et des méthodes vides |  | 3h | 2018-05-15 16:05 | 2018-05-16 10:35 | 9 |  |  | 0d |  |  |  |
| 12 | 1.4.2 | Implémentation de la base de données |  | 3h | 2018-05-16 10:35 | 2018-05-16 15:00 | 11 |  |  | 0d |  | 2h |  |
| 13 | 1.4.3 | Implémentation et tests de la saisie de l'utilisateur |  | 5h | 2018-05-16 15:20 | 2018-05-17 15:50 | 12 |  |  | 0d |  |  |  |
| 14 | 1.4.4 | Implémentation de la classe de calcul avec des calculs simples |  | 4h | 2018-05-17 09:00 A | 2018-05-22 10:20 | 13 | 25% | 3h | 0.21d | 0d | 4h | 1h |
| 15 | 1.4.5 | Tests de la classe de calcul |  | 3h | 2018-05-22 10:20 | 2018-05-22 14:40 | 14 |  |  | 0.21d | 0d | 2h |  |
| 16 | 1.4.6 | Implémentation des calculs avancés |  | 3h | 2018-05-22 14:40 | 2018-05-23 09:10 | 15 |  |  | 0.21d | 0d | 2.75h |  |
| 17 | 1.4.7 | Tests des calculs avancés |  | 5h | 2018-05-23 09:10 | 2018-05-24 10:00 | 16 |  |  | 0.21d | 0d | 3.5h |  |
| 18 | 1.4.8 | Implémentation de l'historique des opérations |  | 2h | 2018-05-24 10:00 | 2018-05-24 12:00 | 17 |  |  | 0.21d | 0d | 1.25h |  |
| 19 | 1.4.9 | Tests de l'historique des opérations |  | 1h | 2018-05-24 12:00 | 2018-05-24 14:25 | 18 |  |  | 0.21d | 0d | 0.5h |  |
| 20 | 1.4.10 | Implémentation de l'utilisation des constantes |  | 1h | 2018-05-24 14:25 | 2018-05-24 15:45 | 19 |  |  | 0.21d | 0d | 0.5h |  |
| 21 | 1.4.11 | Tests de l'utilisation des constantes |  | 0.5h | 2018-05-24 15:45 | 2018-05-24 16:15 | 20 |  |  | 0.21d | 0d | 0.25h |  |
| 22 | 1.4.12 | Implémentation de la conversion de base numérique |  | 2h | 2018-05-24 16:15 | 2018-05-28 11:15 | 21 |  |  | 0.21d | 0d | 1.25h |  |
| 23 | 1.4.13 | Tests de la conversion de base numérique |  | 0.5h | 2018-05-28 11:15 | 2018-05-28 11:45 | 22 |  |  | 0.21d | 0d | 0.5h |  |
| 24 | 1.4.14 | Implémentation de l'affichage d'un graphe |  | 7h | 2018-05-28 11:45 | 2018-05-29 14:00 | 23 |  |  | 0.21d | 0d | 7h |  |
| 25 | 1.4.15 | Tests de l'affichage de graphe |  | 2h | 2018-05-29 14:00 | 2018-05-29 16:20 | 24 |  |  | 0.21d | 0d | 2h |  |
| 26 | 1.4.16 | Implémentation de la modification des paramètres |  | 4h | 2018-05-29 16:20 | 2018-05-30 11:50 | 25 |  |  | 0.21d | 0d | 4h |  |
| 27 | 1.4.17 | Tests de la modification des paramètres |  | 1h | 2018-05-30 11:50 | 2018-05-30 14:15 | 26 |  |  | 0.21d | 0d | 1h |  |
| 28 | 1.4.18 | Modifications selon les tests client |  | 3h | 2018-05-30 14:15 | 2018-05-31 11:20 | 27 |  |  | 0.21d | 0d | 1h |  |
| 29 | 1.5 | Documentation de la réalisation |  | 4h | 2018-05-31 11:20 | 2018-06-04 10:05 | 28 |  |  | 0.21d | 0d | 5h |  |
| 30 | 1.6 | Documentation finale |  | 7h | 2018-06-04 10:05 | 2018-06-05 11:00 | 29 |  |  | 0.21d | 0d | 5h |  |
| 31 | 1.7 | Préparation du rendu final |  | 6h | 2018-06-05 11:00 | 2018-06-06 10:10 | 30 |  |  | 0.21d |  |  |  |
| 32 | 1.8 | Documentation continue | manual | 90h | 2018-05-08 09:00 A | 2018-06-06 11:40 |  |  | 90h |  |  | 90h |  |
